# 43 North Phase II Construction Schedule

Schedule from MS Project, 2006-07-21 to 2015-11-25.
Eastbrook Homes, Inc.

## Calendars

- Standard: Mon-Fri 08:00-12:00, 13:00-17:00; Sat-Sun off.

## Schedule

| ID | WBS | Task | Duration | Start | Finish | Predecessors | Total slack | Free slack | Constraint |
| --- | --- | --- | --- | --- | --- | --- | --- | --- | --- |
| 1 | 1 | **SCHEDULE TEMPLATE - BIDDING THRU CONSTR.** | 2439d | 2006-07-21 | 2015-11-25 |  | 0d |  |  |
| 2 | 1.1 | PROJECT APPROVALS | 1d | 2015-06-01 | 2015-06-01 |  | 111d | 0d | start no earlier than 2015-06-01 |
| 3 | 1.2 | **BIDDING** | 2313d | 2006-07-21 | 2015-06-02 |  | 126d |  |  |
| 4 | 1.2.1 | Prepare Project Qty Quantities and Bid Pkg | 1d | 2015-06-02 | 2015-06-02 | 2 | 111d |  | finish no earlier than 2015-06-01 |
| 5 | 1.2.2 | Review Dykstra Proposal | 2d | 2006-07-21 | 2006-07-24 |  | 2416d | 0d |  |
| 6 | 1.2.3 | Prepare & Award Contract | 8d | 2006-07-25 | 2006-08-03 | 5 | 2416d | 0d |  |
| 7 | 1.3 | **MISCELLANEOUS TASKS** | 33d | 2015-06-01 | 2015-07-15 |  | 95d |  |  |
| 8 | 1.3.1 | Send plans to Utilities | 1d | 2015-06-01 | 2015-06-01 |  | 112d |  | start no earlier than 2015-06-01 |
| 9 | 1.3.2 | Follow up Utilites to ensure they received drawings | 1d | 2015-06-01 | 2015-06-01 |  | 80d | 0d | start no earlier than 2015-06-01 |
| 10 | 1.3.3 | Follow up with Utilities to discuss location, project timing & street lights | 1d | 2015-06-30 | 2015-06-30 | 9FS+20d | 80d | 0d | start no earlier than 2015-06-01 |
| 11 | 1.3.4 | Follow up on Utility Crossings | 1d | 2015-07-15 | 2015-07-15 | 10FS+10d | 80d |  | start no earlier than 2015-06-01 |
| 12 | 1.4 | **FINANCIAL** | 2350d | 2006-07-21 | 2015-07-23 |  | 89d |  |  |
| 13 | 1.4.1 | Revise Financial Anaylsis | 1d | 2015-06-01 | 2015-06-01 |  | 89d | 0d | finish no earlier than 2015-06-01 |
| 14 | 1.4.2 | Submit Loan Request | 1d | 2015-06-03 | 2015-06-03 | 13FS+1d | 89d | 0d |  |
| 15 | 1.4.3 | Meet with Appraiser | 1d | 2015-06-12 | 2015-06-12 | 14FS+6d | 118d |  |  |
| 16 | 1.4.4 | Loan Approval | 1d | 2015-07-23 | 2015-07-23 | 14FS+35d | 89d |  |  |
| 17 | 1.4.5 | Preliminary Lot Premiums | 3d | 2006-07-21 | 2006-07-25 |  | 2434d | 0d |  |
| 18 | 1.4.6 | Meet with Sales to discuss Premiums & GLD | 1d | 2006-07-27 | 2006-07-27 | 17FS+1d | 2434d |  |  |
| 19 | 1.5 | RECEIVED ALL PERMITS | 1d | 2015-06-01 | 2015-06-01 |  | 112d |  | start no earlier than 2015-06-01 |
| 20 | 1.6 | **MARKETING** | 4d | 2015-06-01 | 2015-06-04 |  | 124d |  |  |
| 21 | 1.6.1 | Review Sales Maps | 1d | 2015-06-01 | 2015-06-01 |  | 109d | 0d | finish no earlier than 2015-06-01 |
| 22 | 1.6.2 | Give Sales Maps to Salesperson | 1d | 2015-06-04 | 2015-06-04 | 21FS+2d | 109d |  |  |
| 23 | 1.7 | Preconstruction Meeting | 1d | 2006-08-15 | 2006-08-15 | 6FS+7d | 2416d | 2316d |  |
| 24 | 1.8 | **Construction Process** | 74d | 2015-06-01 | 2015-09-10 |  | 32d |  |  |
| 25 | 1.8.1 | Tree Clearing Staked | 1d | 2015-07-06 | 2015-07-06 | 23FS+2d | 100d | 0d | start no earlier than 2015-07-06 |
| 26 | 1.8.2 | Tree Clearing | 10d | 2015-07-08 | 2015-07-21 |  | 5d |  | finish no earlier than 2015-07-21 |
| 27 | 1.8.3 | SESC Control Measures installed | 2d | 2015-07-07 | 2015-07-08 | 25 | 100d |  |  |
| 28 | 1.8.4 | Test Well - Lot #31 and #26 | 1d | 2015-07-28 | 2015-07-28 |  | 0d |  | finish no earlier than 2015-07-28 |
| 29 | 1.8.5 | Mass Grading | 8d | 2015-07-29 | 2015-08-07 | 26, 28 | 0d |  |  |
| 30 | 1.8.6 | Storm Sewer | 1d | 2015-06-01 | 2015-06-01 |  | 89d | 0d | finish no earlier than 2015-06-01 |
| 31 | 1.8.7 | Install Utility Crossings | 1d | 2015-06-02 | 2015-06-02 | 30 | 89d | 0d |  |
| 32 | 1.8.8 | Road Subbase | 4d | 2015-06-03 | 2015-06-08 | 31 | 89d | 0d |  |
| 33 | 1.8.9 | Concrete Work (curbs & sidewalk) | 1d | 2015-06-09 | 2015-06-09 | 32 | 89d | 0d |  |
| 34 | 1.8.10 | Base Pavement | 1d | 2015-06-10 | 2015-06-10 | 33 | 89d | 0d |  |
| 35 | 1.8.11 | Raise Structures | 2d | 2015-06-12 | 2015-06-15 | 34FS+1d | 117d |  |  |
| 36 | 1.8.12 | Inspections & Punchlists | 2d | 2015-09-01 | 2015-09-02 |  | 60d |  | start no earlier than 2015-09-01 |
| 37 | 1.8.13 | Final Lift of pavement | 1d | 2015-09-01 | 2015-09-01 |  | 32d | 0d | start no earlier than 2015-09-01 |
| 38 | 1.8.14 | Final site walk with superintendents | 1d | 2015-09-04 | 2015-09-04 | 37FS+2d | 58d |  |  |
| 39 | 1.8.15 | Complete Restoration | 5d | 2015-09-04 | 2015-09-10 | 37FS+2d | 32d | 0d |  |

| ID | WBS | Task | Duration | Start | Finish | Predecessors | Total slack | Free slack | Constraint |
| --- | --- | --- | --- | --- | --- | --- | --- | --- | --- |
| 40 | 1.9 | **UTILITES** | 22d | 2015-09-11 | 2015-10-12 |  | 32d |  |  |
| 41 | 1.9.1 | Stake Corners for Utility Company | 1d | 2015-09-11 | 2015-09-11 | 39 | 32d | 0d | start no earlier than 2015-06-01 |
| 42 | 1.9.2 | Utility Installation | 4d | 2015-09-21 | 2015-09-24 | 34FS+15d, 41FS+5d | 32d | 0d |  |
| 43 | 1.9.3 | Street Lighting Installation | 2d | 2015-10-09 | 2015-10-12 | 42FS+10d | 32d |  |  |
| 44 | 1.9.4 | Corner irons to be installed | 2d | 2015-10-01 | 2015-10-02 | 42FS+4d | 38d |  |  |
| 45 | 1.10 | **POST CONSTRUCTION ACTIVITIES** | 20d | 2015-09-14 | 2015-10-09 |  | 33d |  |  |
| 46 | 1.10.1 | Street Signs | 1d | 2015-09-14 | 2015-09-14 | 39FS+1d | 52d |  | finish no earlier than 2015-06-01 |
| 47 | 1.10.2 | Signs for Conservation Easements | 1d | 2015-10-09 | 2015-10-09 | 39FS+20d | 33d |  |  |
| 48 | 1.11 | **Post Construction Appovals** | 20d | 2015-09-04 | 2015-10-01 |  | 39d |  |  |
| 49 | 1.11.1 | As-builts | 20d | 2015-09-04 | 2015-10-01 | 37FS+2d | 39d |  |  |
| 50 | 1.12 | **Plat Process** | 78d | 2015-08-10 | 2015-11-25 |  | 0d |  |  |
| 51 | 1.12.1 | Prepare Plat Drawings | 25d | 2015-08-10 | 2015-09-11 | 29 | 0d |  | start no earlier than 2006-09-12 |
| 52 | 1.12.2 | Letter of Credit | 7d | 2015-09-14 | 2015-09-22 | 51 | 46d |  |  |
| 53 | 1.12.3 | Signatures on Plat Drawing | 15d | 2015-09-14 | 2015-10-02 | 51 | 0d |  |  |
| 54 | 1.12.4 | State Review of Final Plat | 15d | 2015-10-06 | 2015-10-26 | 53FS+1d | 0d |  |  |
| 55 | 1.12.5 | State Comments | 1d | 2015-10-28 | 2015-10-28 | 54FS+1d | 0d |  |  |
| 56 | 1.12.6 | Address State Comments | 5d | 2015-10-29 | 2015-11-04 | 55 | 0d |  |  |
| 57 | 1.12.7 | State Approval | 1d | 2015-11-09 | 2015-11-09 | 56FS+2d | 0d |  |  |
| 58 | 1.12.8 | Project to be Recorded | 1d | 2015-11-13 | 2015-11-13 | 57FS+3d | 0d |  |  |
| 59 | 1.12.9 | Covenant & Restrictions Recorded | 1d | 2015-11-25 | 2015-11-25 | 58FS+7d | 0d |  |  |
